# Test Board Design

Schedule from ProjectLibre, 2023-10-26 to 2023-12-21.

## Calendars

- Standard: Mon-Fri 08:00-12:00, 13:00-17:00; Sat-Sun off.

## Resources

| Resource |
| --- |
| Unassigned |

## Schedule

| ID | WBS | Task | Duration | Start | Finish | Predecessors | Constraint |
| --- | --- | --- | --- | --- | --- | --- | --- |
| 1 | 1 | **Summary Test Board Design & Fab** | 41d? | 2023-10-26 | 2023-12-21 |  | start no earlier than 2023-10-26 |
| 2 | 1.1 | **Create Test Plan doc** | 0d? | 2023-10-26 | 2023-10-26 |  |  |
| 3 | 1.1.1 | Read wiki PCB Tool Ch01 | 0d? | 2023-10-26 | 2023-10-26 |  |  |
| 4 | 1.1.2 | Create new board repo, Test Plan folder | 0d? | 2023-10-26 | 2023-10-26 | 3 | start no earlier than 2023-10-12 |
| 5 | 1.1.3 | Designate Chief & First Mate for board | 0d? | 2023-10-26 | 2023-10-26 | 4 | start no earlier than 2023-10-12 |
| 6 | 1.1.4 | Create Altium schematic symbol for chip | 0d? | 2023-10-26 | 2023-10-26 | 5 |  |
| 7 | 1.1.5 | Paste chip/pkg schematic symbol into Test Plan doc | 0d? | 2023-10-26 | 2023-10-26 | 6 |  |
| 8 | 1.1.6 | Make decisions about #boards to fab/stuff | 0d? | 2023-10-26 | 2023-10-26 | 7 | start no earlier than 2023-10-12 |
| 9 | 1.2 | **Create Altium schematic for test board** | 2d? | 2023-10-26 | 2023-10-27 | 2 | start no earlier than 2023-10-26 |
| 10 | 1.2.1 | Make decisions on connector part numbers | 0d | 2023-10-26 | 2023-10-26 |  |  |
| 11 | 1.2.2 | Make decisions on reset switches, voltage domains | 0d | 2023-10-26 | 2023-10-26 | 10 |  |
| 12 | 1.2.3 | Add part records to PartSync if new parts | 0d | 2023-10-26 | 2023-10-26 | 11 |  |
| 13 | 1.2.4 | Create new Altium pcb project | 0d | 2023-10-26 | 2023-10-26 | 12 |  |
| 14 | 1.2.5 | Set Altium hierarchical project options | 0d | 2023-10-26 | 2023-10-26 | 13 |  |
| 15 | 1.2.6 | Make power domains global variables | 1d? | 2023-10-26 | 2023-10-26 | 14 |  |
| 16 | 1.2.7 | Put sheet symbols on top-level schematic | 0d | 2023-10-26 | 2023-10-26 | 15 |  |
| 17 | 1.2.8 | Place schematic symbols f/BWRC.SchLib not web | 0d | 2023-10-26 | 2023-10-26 | 16 |  |
| 18 | 1.2.9 | Add manufacturer's part numberto all ICs, conns | 0d? | 2023-10-26 | 2023-10-26 | 17 |  |
| 19 | 1.2.10 | Check Altium project's Parameter Manager | 1d | 2023-10-27 | 2023-10-27 | 18 |  |
| 20 | 1.2.11 | Wire up schematic | 0d | 2023-10-27 | 2023-10-27 | 19 |  |
| 21 | 1.2.12 | Re-set reference designators and re-annotate | 0d | 2023-10-27 | 2023-10-27 | 20 | start no earlier than 2023-10-13 |
| 22 | 1.2.13 | Compile Altium project, check erro Messages | 0d | 2023-10-27 | 2023-10-27 | 21 |  |
| 23 | 1.2.14 | Fill in title block for each schematic sheet | 0d | 2023-10-27 | 2023-10-27 | 22 | start no earlier than 2023-10-12 |
| 24 | 1.3 | **Create Altium output files for hand-off** | 1d? | 2023-10-27 | 2023-10-30 | 9 | start no earlier than 2023-10-26 |
| 25 | 1.3.1 | Read wiki PCB Tool Ch10d first half | 1d | 2023-10-30 | 2023-10-30 |  |  |
| 26 | 1.3.2 | Add Outjob file to Altium pcb project | 0d | 2023-10-27 | 2023-10-27 |  |  |
| 27 | 1.3.3 | Generate pick-and-place file from Outjob window | 1d? | 2023-10-30 | 2023-10-30 | 26 |  |
| 28 | 1.3.4 | Generate schematic pdf from Outjob window | 0d | 2023-10-30 | 2023-10-30 | 27 |  |
| 29 | 1.3.5 | Create folder in board repo for Schematics_pdf | 0d | 2023-10-30 | 2023-10-30 | 28 |  |
| 30 | 1.3.6 | Store latest pdf of schematics there with date/time | 0d | 2023-10-30 | 2023-10-30 | 29 |  |

| ID | WBS | Task | Duration | Start | Finish | Predecessors | Constraint |
| --- | --- | --- | --- | --- | --- | --- | --- |
| 31 | 1.4 | **Create Bill of Materials in BOM Builder** | 1d? | 2023-10-27 | 2023-10-30 | 9 | start no earlier than 2023-10-26 |
| 32 | 1.4.1 | Read wiki Ch10d second half | 1d? | 2023-10-30 | 2023-10-30 |  |  |
| 33 | 1.4.2 | Configure BOM Builder options | 0d | 2023-10-27 | 2023-10-27 |  |  |
| 34 | 1.4.3 | Configure RefDesMapping file for BOM Builder | 0d | 2023-10-27 | 2023-10-27 | 33 |  |
| 35 | 1.4.4 | Configure inpul list processor .dll for importing parts | 0d | 2023-10-27 | 2023-10-27 | 34 |  |
| 36 | 1.4.5 | Import Pick-and-Place file into BOM Builder | 0d | 2023-10-27 | 2023-10-27 | 35 |  |
| 37 | 1.4.6 | Match each line item to real PartSync part | 1d? | 2023-10-30 | 2023-10-30 | 36 |  |
| 38 | 1.4.7 | Create Job directory on G: shared drive for .bmb | 0d | 2023-10-30 | 2023-10-30 | 37 |  |
| 39 | 1.4.8 | Save .bmb file to Job directory | 0d | 2023-10-30 | 2023-10-30 | 38 |  |
| 40 | 1.5 | **Add Bill of Materials to PartSync** | 1d? | 2023-10-30 | 2023-10-31 | 39, 31 | start no earlier than 2023-10-26 |
| 41 | 1.5.1 | Read wiki Ch10e | 1d? | 2023-10-31 | 2023-10-31 |  |  |
| 42 | 1.5.2 | Import .bmb into PartSync as part list record | 0d | 2023-10-30 | 2023-10-30 |  |  |
| 43 | 1.5.3 | Create purchase lilst for build of desired number + spares | 1d? | 2023-10-31 | 2023-10-31 | 42 |  |
| 44 | 1.5.4 | Create folder in repo Files_for_AssemblyHouse | 0d | 2023-10-31 | 2023-10-31 | 43 |  |
| 45 | 1.5.5 | Save purchase list pdf to Files_for_AssemblyHouse | 0d | 2023-10-31 | 2023-10-31 | 44 |  |
| 46 | 1.6 | **Check schematics & parts** | 2d | 2023-11-01 | 2023-11-02 |  | start no earlier than 2023-10-26 |
| 47 | 1.6.1 | Check schematic pdfs, parts list and fix errors | 1d | 2023-11-01 | 2023-11-01 | 40 |  |
| 48 | 1.6.2 | Iterate and communicate amongst designers | 1d | 2023-11-02 | 2023-11-02 | 47 |  |
| 49 | 1.7 | **Update personal Gantt chart** | 1d? | 2023-11-03 | 2023-11-03 | 46 | start no earlier than 2023-10-26 |
| 50 | 1.7.1 | Estimate timelines for post Test Plan Review design changes | 1d? | 2023-11-03 | 2023-11-03 |  |  |
| 51 | 1.7.2 | Estimate timelines for ordering parts and/or pastemask stencils | 1d? | 2023-11-03 | 2023-11-03 |  |  |
| 52 | 1.7.3 | Estimate timelines for layout tasks post Test Plan Review | 1d? | 2023-11-03 | 2023-11-03 |  |  |
| 53 | 1.7.4 | Estimate timeline for checking layout for correctness | 1d? | 2023-11-03 | 2023-11-03 |  |  |
| 54 | 1.7.5 | Estimate timelines for comms with vendors | 1d? | 2023-11-03 | 2023-11-03 |  |  |
| 55 | 1.7.6 | Estimate timelines for BearBuy orders to vendors | 1d? | 2023-11-03 | 2023-11-03 |  |  |
| 56 | 1.7.7 | Estimate timelines for vendor manufacturing & shipping | 1d? | 2023-11-03 | 2023-11-03 |  |  |
| 57 | 1.7.8 | Add all steps for testing procedures | 1d? | 2023-11-03 | 2023-11-03 |  |  |

| ID | WBS | Task | Duration | Start | Finish | Predecessors | Constraint |
| --- | --- | --- | --- | --- | --- | --- | --- |
| 58 | 1.8 | **Designers Review** | 1d? | 2023-11-03 | 2023-11-03 | 46 | start no earlier than 2023-10-26 |
| 59 | 1.8.1 | Chief and First mate and any other designers of the test board meet | 1d? | 2023-11-03 | 2023-11-03 |  |  |
| 60 | 1.8.2 | Compare each others Gantt charts and estimates | 1d? | 2023-11-03 | 2023-11-03 |  |  |
| 61 | 1.8.3 | Review schematics, test plan and final parts list together | 1d? | 2023-11-03 | 2023-11-03 |  |  |
| 62 | 1.8.4 | Correct any errors, make changes to hand-off docs | 1d? | 2023-11-03 | 2023-11-03 |  |  |
| 63 | 1.8.5 | Store corrected hand-off docs to git | 1d? | 2023-11-03 | 2023-11-03 |  |  |
| 64 | 1.9 | **Test Plan Review** | 2d? | 2023-11-06 | 2023-11-07 | 58 | start no earlier than 2023-10-26 |
| 65 | 1.9.1 | Invite 2 outside students | 1d? | 2023-11-06 | 2023-11-06 |  |  |
| 66 | 1.9.2 | Send them schematics, parts list, Gantt chart & Test Plan doc 2 days prior | 0d | 2023-11-06 | 2023-11-06 | 65 |  |
| 67 | 1.9.3 | Meet in person or zoom, walk through test plan & these docs | 1d? | 2023-11-07 | 2023-11-07 | 66 |  |
| 68 | 1.10 | **Post Test Plan Review updates** | 1d? | 2023-11-07 | 2023-11-08 | 64 | start no earlier than 2023-10-26 |
| 69 | 1.10.1 | Update schematics, parts list, Gantt chart and Test Plan | 1d? | 2023-11-08 | 2023-11-08 | 67 |  |
| 70 | 1.10.2 | Add reviewer names & review date to Test Plan doc | 0d | 2023-11-07 | 2023-11-07 |  |  |
| 71 | 1.10.3 | Create final set of hand-off documents (for advisor, layout person) | 0d | 2023-11-08 | 2023-11-08 | 69 |  |
| 72 | 1.11 | **Email advisor to notify re hand-off to layout person** | 1d? | 2023-11-09 | 2023-11-09 | 68 |  |
| 73 | 1.11.1 | Send email to your advisor | 1d? | 2023-11-09 | 2023-11-09 | 71 |  |
| 74 | 1.11.2 | Attach Test Plan doc | 1d? | 2023-11-09 | 2023-11-09 |  |  |
| 75 | 1.11.3 | Attach pdf of schematics | 1d? | 2023-11-09 | 2023-11-09 |  |  |
| 76 | 1.11.4 | Attach pdf of Gantt chart | 1d? | 2023-11-09 | 2023-11-09 |  |  |
| 77 | 1.11.5 | Attach pdf of purchasing list | 1d? | 2023-11-09 | 2023-11-09 |  |  |
| 78 | 1.11.6 | Don't expect your advisor to read these. | 1d? | 2023-11-09 | 2023-11-09 |  |  |
| 79 | 1.11.7 | Simply ensure that he/she understands this is the time of handoff | 1d? | 2023-11-09 | 2023-11-09 |  |  |
| 80 | 1.12 | **Email layout person to notify about hand-off to layout** | 1d? | 2023-11-09 | 2023-11-09 | 69 |  |
| 81 | 1.12.1 | List in email where hand-off docs are (git etc.) | 1d? | 2023-11-09 | 2023-11-09 |  |  |

| ID | WBS | Task | Duration | Start | Finish | Predecessors |
| --- | --- | --- | --- | --- | --- | --- |
| 82 | 1.13 | **Chief student orders parts** | 3d? | 2023-11-09 | 2023-11-13 | 69 |
| 83 | 1.13.1 | If some boards will assembled in house, assembly house should not order parts | 1d? | 2023-11-09 | 2023-11-09 |  |
| 84 | 1.13.2 | Parts should be ordered through BearBuy and shipped to BWRC | 1d? | 2023-11-10 | 2023-11-10 | 83 |
| 85 | 1.13.3 | Parts should be ordered early enough, checked for in stock | 1d? | 2023-11-09 | 2023-11-09 |  |
| 86 | 1.13.4 | Purchase list should be generated from PartSync part record | 1d? | 2023-11-09 | 2023-11-09 |  |
| 87 | 1.13.5 | Ensure that any non-board parts are added to part list, if needed (cables, whip antennas) | 1d? | 2023-11-09 | 2023-11-09 |  |
| 88 | 1.13.6 | Notify advisor of total cost | 1d? | 2023-11-10 | 2023-11-10 | 87 |
| 89 | 1.13.7 | Get advisor to tell Candy/Mikaela what chartstring to use | 1d? | 2023-11-13 | 2023-11-13 | 88 |
| 90 | 1.13.8 | Submit BearBuy requisition, mark as urgent, note shipping type | 1d? | 2023-11-13 | 2023-11-13 | 88 |
| 91 | 1.13.9 | Mouser can ship 2nd day, but Digikey screws up and ships ground | 1d? | 2023-11-13 | 2023-11-13 | 88 |
| 92 | 1.13.10 | Assign cart to Candy/Mikaela and talk to them personally to alert them | 1d? | 2023-11-13 | 2023-11-13 | 88 |
| 93 | 1.13.11 | After Candy/Mikaela push requisition, check your BearBuy for PO generation date | 1d? | 2023-11-13 | 2023-11-13 | 88 |
| 94 | 1.14 | **Layout person kickoff** | 1d? | 2023-11-09 | 2023-11-09 | 68 |
| 95 | 1.14.1 | Layout person checks Test Plan for completeness | 1d? | 2023-11-09 | 2023-11-09 |  |
| 96 | 1.14.2 | Notify designers of schematic errors, missing info. Iterate. | 1d? | 2023-11-09 | 2023-11-09 |  |
| 97 | 1.14.3 | Request prelimary stackup from board house | 1d? | 2023-11-09 | 2023-11-09 |  |
| 98 | 1.15 | **Rough out board size** | 8d? | 2023-11-10 | 2023-11-21 | 94 |
| 99 | 1.15.1 | Get footprint names from PartSync | 1d? | 2023-11-10 | 2023-11-10 |  |
| 100 | 1.15.2 | Add footprint names to schematic sheets | 1d? | 2023-11-13 | 2023-11-13 | 99 |
| 101 | 1.15.3 | Compile schematic and push to PCB side | 1d? | 2023-11-14 | 2023-11-14 | 100 |
| 102 | 1.15.4 | Place connectors and large components roughly | 1d? | 2023-11-15 | 2023-11-15 | 101 |
| 103 | 1.15.5 | Learn SolidWorks basics | 1d? | 2023-11-16 | 2023-11-16 | 102 |
| 104 | 1.15.6 | Read wiki PCB Tool Ch08, overview & SMA spacing | 1d? | 2023-11-17 | 2023-11-17 | 103 |
| 105 | 1.15.7 | Look at panel in SolidWorks and determine # per panel | 1d? | 2023-11-20 | 2023-11-20 | 104 |
| 106 | 1.15.8 | Update Test Plan doc with screenshots of board & panel | 1d? | 2023-11-21 | 2023-11-21 | 105 |

| ID | WBS | Task | Duration | Start | Finish | Predecessors |
| --- | --- | --- | --- | --- | --- | --- |
| 107 | 1.16 | **Board layout** | 7d? | 2023-11-10 | 2023-11-20 | 94 |
| 108 | 1.16.1 | Add/create package models in PackEdit | 7d | 2023-11-10 | 2023-11-20 |  |
| 109 | 1.16.2 | Add/edit footprints to BWRC.PcbLib and/or schematics | 1d | 2023-11-10 | 2023-11-10 |  |
| 110 | 1.16.3 | Order a few parts if necessary to check parts to 1:1 printed footprints | 1d | 2023-11-10 | 2023-11-10 |  |
| 111 | 1.16.4 | Create board outline | 1d | 2023-11-10 | 2023-11-10 |  |
| 112 | 1.16.5 | Create board statckup as all signal layers | 1d | 2023-11-10 | 2023-11-10 |  |
| 113 | 1.16.6 | Create edge keepouts for polygon pours for pwd, gnd layers | 1d | 2023-11-10 | 2023-11-10 |  |
| 114 | 1.16.7 | Modify placement of parts | 1d | 2023-11-10 | 2023-11-10 |  |
| 115 | 1.16.8 | Create all DRC rules in Altium's rule editor | 1d | 2023-11-10 | 2023-11-10 |  |
| 116 | 1.16.9 | Set Altium project options for net colors, rooms, comparator | 1d | 2023-11-10 | 2023-11-10 |  |
| 117 | 1.16.10 | Update schematics with net names for every net | 1d | 2023-11-10 | 2023-11-10 |  |
| 118 | 1.16.11 | Update schematics with net classes for controlled impedance traces | 1d | 2023-11-10 | 2023-11-10 |  |
| 119 | 1.16.12 | Create mounting holes and keepouts for screw heads, standoffs | 1d | 2023-11-10 | 2023-11-10 |  |
| 120 | 1.16.13 | Create SolidWorks assembly of test setup | 1d | 2023-11-10 | 2023-11-10 |  |
| 121 | 1.16.14 | Set placement of board-to-board connectors | 1d? | 2023-11-10 | 2023-11-10 |  |
| 122 | 1.16.15 | Select mechanical parts & order from McMaster | 1d? | 2023-11-10 | 2023-11-10 |  |
| 123 | 1.16.16 | Buy new parts not previously used to check footprints | 1d? | 2023-11-10 | 2023-11-10 |  |
| 124 | 1.16.17 | Check vacation schedule for anyone in Bear Buy approval path | 1d? | 2023-11-10 | 2023-11-10 |  |
| 125 | 1.16.18 | Check with Purchasing if Digikey 2nd day is still screwed up | 1d? | 2023-11-10 | 2023-11-10 |  |
| 126 | 1.16.19 | Double-check all bypass caps and polarized caps | 1d? | 2023-11-10 | 2023-11-10 |  |
| 127 | 1.16.20 | Determine if board can fit within Beam On jig for in-house assembly | 1d? | 2023-11-10 | 2023-11-10 |  |
| 128 | 1.16.21 | Add ficucials for assembly | 1d? | 2023-11-10 | 2023-11-10 |  |
| 129 | 1.16.22 | Add layer numbering test structure | 1d? | 2023-11-10 | 2023-11-10 |  |
| 130 | 1.16.23 | Check tented vs. untented vias | 1d? | 2023-11-10 | 2023-11-10 |  |
| 131 | 1.16.24 | Remove internal pads | 1d? | 2023-11-10 | 2023-11-10 |  |
| 132 | 1.16.25 | Set line width for controlled impedance traces | 1d? | 2023-11-10 | 2023-11-10 |  |
| 133 | 1.16.26 | Create fab drawing and add to Altium project | 1d? | 2023-11-10 | 2023-11-10 |  |
| 134 | 1.16.27 | Note controlled impedance trace widths in fab drawing | 1d? | 2023-11-10 | 2023-11-10 |  |
| 135 | 1.16.28 | Note mounted cross-sections on fab drawing | 1d? | 2023-11-10 | 2023-11-10 |  |
| 136 | 1.16.29 | Check fab drawing drill table for all hole tolerances | 1d? | 2023-11-10 | 2023-11-10 |  |
| 137 | 1.16.30 | Add free text to silkscreen layers | 1d? | 2023-11-10 | 2023-11-10 |  |
| 138 | 1.16.31 | Add BWRC logo, name, date and serial number block to silkscreen | 1d? | 2023-11-10 | 2023-11-10 |  |
| 139 | 1.16.32 | View bottom silkscreen from backside to check rotation of text | 1d? | 2023-11-10 | 2023-11-10 |  |
| 140 | 1.16.33 | Set up Outjob file for test point report, ODB, Gerbers, fab drawing | 1d? | 2023-11-10 | 2023-11-10 |  |
| 141 | 1.16.34 | Update the fab drawing with latest changes | 1d? | 2023-11-10 | 2023-11-10 |  |
| 142 | 1.16.35 | Check no stale via types are inadvertently added | 1d? | 2023-11-10 | 2023-11-10 |  |
| 143 | 1.16.36 | Add free ground vias for return currents crossing layers | 1d? | 2023-11-10 | 2023-11-10 |  |
| 144 | 1.16.37 | Create custom room on PCB side if needed. Adjust project options. | 1d? | 2023-11-10 | 2023-11-10 |  |
| 145 | 1.16.38 | Check necking and isolation settings in Polygon Manager | 1d? | 2023-11-10 | 2023-11-10 |  |
| 146 | 1.16.39 | Check thermal reliefs and via direct-connects | 1d? | 2023-11-10 | 2023-11-10 |  |
| 147 | 1.16.40 | In Rules editor, ensure all rules are enabled when DRC checking | 1d? | 2023-11-10 | 2023-11-10 |  |
| 148 | 1.16.41 | Set diff pair rules carefully | 1d? | 2023-11-10 | 2023-11-10 |  |
| 149 | 1.16.42 | Create polygon regions on pwer layers for voltage domains | 1d? | 2023-11-10 | 2023-11-10 |  |
| 150 | 1.16.43 | Layout out all traces after fanning out pwr, gnd | 1d? | 2023-11-10 | 2023-11-10 |  |

| ID | WBS | Task | Duration | Start | Finish | Predecessors |
| --- | --- | --- | --- | --- | --- | --- |
| 151 | 1.17 | **Create board output files** | 1d? | 2023-11-21 | 2023-11-21 | 107 |
| 152 | 1.17.1 | Generate Gerber files for BOM Builder checking | 1d? | 2023-11-21 | 2023-11-21 |  |
| 153 | 1.17.2 | Create folder in repo, Files_for_BoardHouse | 1d? | 2023-11-21 | 2023-11-21 |  |
| 154 | 1.17.3 | Generate ODB .zip file for board house | 1d? | 2023-11-21 | 2023-11-21 |  |
| 155 | 1.17.4 | Create pdf of fab drawing | 1d? | 2023-11-21 | 2023-11-21 |  |
| 156 | 1.17.5 | Create test point file for board house | 1d? | 2023-11-21 | 2023-11-21 |  |
| 157 | 1.17.6 | Save ODB, test pt repot, fab drawing to Files_for_BoardHouse | 1d? | 2023-11-21 | 2023-11-21 |  |
| 158 | 1.18 | **Check package models to footprints with BOM Builder** | 1d? | 2023-11-22 | 2023-11-22 | 151 |
| 159 | 1.18.1 | Use Outjob file to generate a new Pick-and-Place file after layout | 1d? | 2023-11-22 | 2023-11-22 |  |
| 160 | 1.18.2 | This generation of Pick-and-Place file now has XYRS layout info | 1d? | 2023-11-22 | 2023-11-22 |  |
| 161 | 1.18.3 | Import XYRS info into BOM Builder | 1d? | 2023-11-22 | 2023-11-22 |  |
| 162 | 1.18.4 | Import Gerber files of layout into BOM Builder | 1d? | 2023-11-22 | 2023-11-22 |  |
| 163 | 1.18.5 | Check each line item entry while zooming in Assembly view | 1d? | 2023-11-22 | 2023-11-22 |  |
| 164 | 1.18.6 | Ensure packages all match to footprints | 1d? | 2023-11-22 | 2023-11-22 |  |
| 165 | 1.18.7 | Ensure traces all exit footprints orthogonally | 1d? | 2023-11-22 | 2023-11-22 |  |
| 166 | 1.18.8 | Save out Smart PDF from BOM Builder | 1d? | 2023-11-22 | 2023-11-22 |  |
| 167 | 1.18.9 | Save out Assembly BOM from BOM Builder | 1d? | 2023-11-22 | 2023-11-22 |  |
| 168 | 1.18.10 | In board repo, create Files_for_AssemblyHouse folder | 1d? | 2023-11-22 | 2023-11-22 |  |
| 169 | 1.18.11 | Prefix file names of Smart PDF and Assembly BOM with date | 1d? | 2023-11-22 | 2023-11-22 |  |
| 170 | 1.18.12 | Save both files to Files_for_AssemblyHouse folder | 1d? | 2023-11-22 | 2023-11-22 |  |
| 171 | 1.18.13 | Tell student designers to also do this check of package models to Gerbers | 1d? | 2023-11-22 | 2023-11-22 |  |
| 172 | 1.19 | **Prepare Request For Quote (RFQ) to board house** | 1d? | 2023-11-22 | 2023-11-22 | 151 |
| 173 | 1.19.1 | Create RFQ sub-folder in Files_for_BoardHouse dir | 1d? | 2023-11-22 | 2023-11-22 |  |
| 174 | 1.19.2 | Check prev students' board repos for example RFQ pptx | 1d? | 2023-11-22 | 2023-11-22 |  |
| 175 | 1.19.3 | Make pptx file asking for what the quote should cover | 1d? | 2023-11-22 | 2023-11-22 |  |
| 176 | 1.19.4 | In pptx, ask for number of boards to be fabbed, dielectric mat & plating. | 1d? | 2023-11-22 | 2023-11-22 |  |
| 177 | 1.19.5 | In pptx, request quotes for both 5-day turn and 10-day turn | 1d? | 2023-11-22 | 2023-11-22 |  |
| 178 | 1.19.6 | In pptx, don't forget to ask for mounted cross-sections. | 1d? | 2023-11-22 | 2023-11-22 |  |
| 179 | 1.19.7 | Add dated ODB .zip file to this sub-folder | 1d? | 2023-11-22 | 2023-11-22 |  |
| 180 | 1.19.8 | Add preliminary stackup, fab drwg pdf, test point report, to this sub-folder | 1d? | 2023-11-22 | 2023-11-22 |  |
| 181 | 1.19.9 | Ensure to ask for specials: controlled impedance traces, vias in pads | 1d? | 2023-11-22 | 2023-11-22 |  |

| ID | WBS | Task | Duration | Start | Finish | Predecessors |
| --- | --- | --- | --- | --- | --- | --- |
| 182 | 1.20 | **Organize & log communications with vendors** | 1d? | 2023-11-23 | 2023-11-23 | 172 |
| 183 | 1.20.1 | Create communications_to_vendors txt file | 1d? | 2023-11-23 | 2023-11-23 |  |
| 184 | 1.20.2 | Look in prev students' repos' Test Plan folder for this txt file | 1d? | 2023-11-23 | 2023-11-23 |  |
| 185 | 1.20.3 | Format the text of an email to board house | 1d? | 2023-11-23 | 2023-11-23 |  |
| 186 | 1.20.4 | List the full name of each included file | 1d? | 2023-11-23 | 2023-11-23 |  |
| 187 | 1.20.5 | Make sure each file name starts with the date | 1d? | 2023-11-23 | 2023-11-23 |  |
| 188 | 1.20.6 | Save this communications_to_vendors.txt to Test Plan folder | 1d? | 2023-11-23 | 2023-11-23 |  |
| 189 | 1.21 | **Chief student sends RFQ to board house** | 1d? | 2023-11-24 | 2023-11-24 | 182 |
| 190 | 1.21.1 | Email designers to pull these files from the repo | 1d? | 2023-11-24 | 2023-11-24 |  |
| 191 | 1.21.2 | Have them double-check for errors | 1d? | 2023-11-24 | 2023-11-24 |  |
| 192 | 1.21.3 | Have them forward the email to the board house w/attachments | 1d? | 2023-11-24 | 2023-11-24 |  |
| 193 | 1.21.4 | Include attachments: prelim stackup, ODB, fab drwg, test point report & pptx | 1d? | 2023-11-24 | 2023-11-24 |  |
| 194 | 1.21.5 | Tell students to cc layout person on this email to board house | 1d? | 2023-11-24 | 2023-11-24 |  |
| 195 | 1.21.6 | Tell students to alert advisor that quote is imminent | 1d? | 2023-11-24 | 2023-11-24 |  |
| 196 | 1.21.7 | Have students learn to how to create a BearBuy requisition | 1d? | 2023-11-24 | 2023-11-24 |  |
| 197 | 1.21.8 | Have students notify Candy/Mikaela that this requisition will come to them soon | 1d? | 2023-11-24 | 2023-11-24 |  |
| 198 | 1.22 | **Chief student submits BearBuy requisition after board quote arrives** | 1d? | 2023-11-27 | 2023-11-27 | 189 |
| 199 | 1.22.1 | Notify advisor re amount of quote | 1d? | 2023-11-27 | 2023-11-27 |  |
| 200 | 1.22.2 | Get advisor to tell Candy/Mikaela what chartstring to use | 1d? | 2023-11-27 | 2023-11-27 |  |
| 201 | 1.22.3 | Submit BearBuy requisition, mark as urgent, note shipping type | 1d? | 2023-11-27 | 2023-11-27 |  |
| 202 | 1.22.4 | Shipping type: will you drive to pick up, or have boards sent to BWRC? | 1d? | 2023-11-27 | 2023-11-27 |  |
| 203 | 1.22.5 | Assign cart to Candy/Mikaela and talk to them personally to alert them | 1d? | 2023-11-27 | 2023-11-27 |  |
| 204 | 1.22.6 | Email board house that PO is in process | 1d? | 2023-11-27 | 2023-11-27 |  |
| 205 | 1.22.7 | Email board house if board house CAM shop should wait for updated files | 1d? | 2023-11-27 | 2023-11-27 |  |
| 206 | 1.22.8 | After Candy/Mikaela push requisition, check your BearBuy for PO generation date | 1d? | 2023-11-27 | 2023-11-27 |  |

| ID | WBS | Task | Duration | Start | Finish | Predecessors |
| --- | --- | --- | --- | --- | --- | --- |
| 207 | 1.23 | **Check ODB files with Viewmate Deluxe & EMS Magician** | 1d? | 2023-11-23 | 2023-11-23 | 158 |
| 208 | 1.23.1 | Set up Viewmate Deluxe and read in ODB files | 1d? | 2023-11-23 | 2023-11-23 |  |
| 209 | 1.23.2 | Create rules to check in EMS Magician | 1d? | 2023-11-23 | 2023-11-23 |  |
| 210 | 1.23.3 | If errors, update design and re-generate all output files | 1d? | 2023-11-23 | 2023-11-23 |  |
| 211 | 1.23.4 | Tell student designers to also do this checking | 1d? | 2023-11-23 | 2023-11-23 |  |
| 212 | 1.24 | **Chief student works with board house CAM shop** | 1d? | 2023-11-24 | 2023-11-24 | 207 |
| 213 | 1.24.1 | Chief student monitors BearBuy for PO sent to board house | 1d? | 2023-11-24 | 2023-11-24 |  |
| 214 | 1.24.2 | Make any last minute changes, re-generate all output files | 1d? | 2023-11-24 | 2023-11-24 |  |
| 215 | 1.24.3 | If changes, create folder in repo, Final_files_to_BoardHouse | 1d? | 2023-11-24 | 2023-11-24 |  |
| 216 | 1.24.4 | Prefix all files with date and save complete set to that directory | 1d? | 2023-11-24 | 2023-11-24 |  |
| 217 | 1.24.5 | Compose text of email to board house, listing these files | 1d? | 2023-11-24 | 2023-11-24 |  |
| 218 | 1.24.6 | Save text to communications_to_vendors.txt, with date | 1d? | 2023-11-24 | 2023-11-24 |  |
| 219 | 1.24.7 | CAM shop at board house will create a ticket portal at their web site | 1d? | 2023-11-24 | 2023-11-24 |  |
| 220 | 1.24.8 | Fix any errors that the CAM shop requires | 1d? | 2023-11-24 | 2023-11-24 |  |
| 221 | 1.24.9 | Re-generate all files, prefix with date and save to folder | 1d? | 2023-11-24 | 2023-11-24 |  |
| 222 | 1.24.10 | Update communications_to_vendors.txt with any updates, for the record | 1d? | 2023-11-24 | 2023-11-24 |  |
| 223 | 1.24.11 | The 5-day or 10-day turn clock starts AFTER CAM agrees to go ahead | 1d? | 2023-11-24 | 2023-11-24 |  |
| 224 | 1.24.12 | Make sure to tell CAM shop how to ship or if you will pick up | 1d? | 2023-11-24 | 2023-11-24 |  |
| 225 | 1.25 | **Prepare RFQ to stencil house for pastemask stencil & Durostone holder** | 1d? | 2023-11-24 | 2023-11-24 | 207 |
| 226 | 1.25.1 | Create folder in repo, Files_for_StencilHouse | 1d? | 2023-11-24 | 2023-11-24 |  |
| 227 | 1.25.2 | Store ODB file and fab drawing, with date prefixed to this folder | 1d? | 2023-11-24 | 2023-11-24 |  |
| 228 | 1.25.3 | Board size must be less than 5" x 3.5" for this in-house assembly | 1d? | 2023-11-24 | 2023-11-24 |  |
| 229 | 1.25.4 | Format text of email to Beam On for RFQ, store in comms_to_vendors | 1d? | 2023-11-24 | 2023-11-24 |  |
| 230 | 1.26 | **Chief student sends RFQ to stencil house** | 1d? | 2023-11-27 | 2023-11-27 | 225 |
| 231 | 1.26.1 | Have student forward the email w/attachments to stencil house, cc layout person | 1d? | 2023-11-27 | 2023-11-27 |  |

| ID | WBS | Task | Duration | Start | Finish | Predecessors | Constraint |
| --- | --- | --- | --- | --- | --- | --- | --- |
| 232 | 1.27 | **Chief student submits BearBuy requisition after stencil quote arrives** | 1d? | 2023-11-28 | 2023-11-28 | 230 |  |
| 233 | 1.27.1 | Notify advisor re amount of quote | 1d? | 2023-11-28 | 2023-11-28 |  |  |
| 234 | 1.27.2 | Get advisor to tell Candy/Mikaela what chartstring to use | 1d? | 2023-11-28 | 2023-11-28 |  |  |
| 235 | 1.27.3 | Submit BearBuy requisition, mark as urgent, note shipping type | 1d? | 2023-11-28 | 2023-11-28 |  |  |
| 236 | 1.27.4 | Email stencil house that PO is in process | 1d? | 2023-11-28 | 2023-11-28 |  |  |
| 237 | 1.27.5 | Watch BearBuy to see when PO goes through | 1d? | 2023-11-28 | 2023-11-28 |  |  |
| 238 | 1.27.6 | Beam On usually makes the stencil in one day and then ships it overnight from SJ | 1d? | 2023-11-28 | 2023-11-28 |  |  |
| 239 | 1.28 | **Prepare RFQ to assembly house** | 1d? | 2023-11-24 | 2023-11-24 | 207 |  |
| 240 | 1.28.1 | Create sub-folder for RFQ_to_AssemblyHouse within Files_for_AssemblyHouse | 1d? | 2023-11-24 | 2023-11-24 |  |  |
| 241 | 1.28.2 | Create pptx RFQ asking for # to stuff, instructions re SMA heat sinks, variant builds | 1d? | 2023-11-24 | 2023-11-24 |  |  |
| 242 | 1.28.3 | Specifiy parts you will supply, number of bare boards you will supply | 1d? | 2023-11-24 | 2023-11-24 |  |  |
| 243 | 1.28.4 | Specify number of SMA heat sinks you will supply, and if stencil jig and pastemask stencils | 1d? | 2023-11-24 | 2023-11-24 |  |  |
| 244 | 1.28.5 | Prefix with date, and store ODB, fab drwg, Smart PDF, Assembly BOM, pptx in this sub-folder | 1d? | 2023-11-24 | 2023-11-24 |  |  |
| 245 | 1.28.6 | Prepare text of email to assembly house for RFQ, store in comms_to_vendors.txt | 1d? | 2023-11-24 | 2023-11-24 |  |  |
| 246 | 1.29 | **Chief student sends RFQ to assembly house** | 1d? | 2023-11-27 | 2023-11-27 | 239 |  |
| 247 | 1.29.1 | Have student forward the email w/attachments to assembly house, cc layout person | 1d? | 2023-11-27 | 2023-11-27 |  |  |
| 248 | 1.30 | **Chief student submits BearBuy requisition after assembly quote arrives** | 1d? | 2023-11-28 | 2023-11-28 | 246 |  |
| 249 | 1.30.1 | Notify advisor re amount of quote | 1d? | 2023-11-28 | 2023-11-28 |  |  |
| 250 | 1.30.2 | Get advisor to tell Candy/Mikaela what chartstring to use | 1d? | 2023-11-28 | 2023-11-28 |  |  |
| 251 | 1.30.3 | Submit BearBuy requisition, note shipping type or if you will pick up | 1d? | 2023-11-28 | 2023-11-28 |  |  |
| 252 | 1.30.4 | Email assembly house that PO is in process | 1d? | 2023-11-28 | 2023-11-28 |  |  |
| 253 | 1.30.5 | Watch BearBuy to see when PO goes through | 1d? | 2023-11-28 | 2023-11-28 |  |  |
| 254 | 1.30.6 | Communicate with assembly house if boards should be sent to BWRC or you will pick up | 1d? | 2023-11-28 | 2023-11-28 |  |  |
| 255 | 1.31 | **Board Sent for fabrication** | 8d? | 2023-11-27 | 2023-12-06 | 239 |  |
| 256 | 1.31.1 | Fabrication | 7d? | 2023-11-27 | 2023-12-05 |  |  |
| 257 | 1.31.2 | Check boards upon return | 1d? | 2023-12-06 | 2023-12-06 | 256 |  |
| 258 | 1.32 | Chips Arrive at BWRC | 1d? | 2023-10-30 | 2023-10-30 |  | start no earlier than 2023-10-30 |
| 259 | 1.33 | Board Sent for assembly | 7d? | 2023-12-07 | 2023-12-15 | 257, 258 |  |

| ID | WBS | Task | Duration | Start | Finish | Predecessors |
| --- | --- | --- | --- | --- | --- | --- |
| 260 | 1.34 | **Bringup** | 18d? | 2023-11-28 | 2023-12-21 | 246 |
| 261 | 1.34.1 | Collect equipment | 1d? | 2023-11-28 | 2023-11-28 |  |
| 262 | 1.34.2 | Program Arty A7-100T | 7d? | 2023-11-28 | 2023-12-06 |  |
| 263 | 1.34.3 | Bring up scan chain | 7d? | 2023-11-28 | 2023-12-06 |  |
| 264 | 1.34.4 | Bring up Rocket | 7d? | 2023-12-07 | 2023-12-15 | 257 |
| 265 | 1.34.5 | Program SRAM BIST | 2d? | 2023-12-18 | 2023-12-19 | 264 |
| 266 | 1.34.6 | Prepare SRAM BIST patterns | 2d? | 2023-12-20 | 2023-12-21 | 265 |
| 267 | 1.34.7 | Test SRAMs with BIST, varying frequency and pattern | 4d? | 2023-11-28 | 2023-12-01 |  |
| 268 | 1.34.8 | Test SRAMs with varying supply voltage | 1d? | 2023-11-28 | 2023-11-28 |  |
